# Software Biblioteca

Schedule from MS Project, 2018-04-09 to 2018-07-04, 2 hours a day, costs in €, A marks actual dates.

## Calendars

- Standard: Mon-Tue 13:30-15:30; Wed 09:00-12:30; Thu-Sun off. Exceptions (off unless hours are given): 2018-04-11 (não trabalhamos).

## Resources

| Resource | Group | Rate |
| --- | --- | --- |
| Flávio | RH | 5 |
| André | RH | 5 |
| Carlota | RH | 5 |
| Rodrigo | RH | 5 |

## Schedule

| ID | WBS | Task | Type | Duration | Start | Finish | Predecessors | Complete | Remaining | Total slack | Free slack | Constraint | Resources | Work | Actual work | Cost | Actual cost | Acção |
| --- | --- | --- | --- | --- | --- | --- | --- | --- | --- | --- | --- | --- | --- | --- | --- | --- | --- | --- |
| 1 | 1 | **Planeamento** |  | 16.75d | 2018-04-09 08:00 A | 2018-05-09 12:00 |  | 45% | 9.16d | 28.25d | 0d |  |  | 41.77h | 22.62h | 208.83 | 113.1 |  |
| 2 | 1.1 | Microsoft Project |  | 33h | 2018-04-09 13:30 A | 2018-05-09 11:30 |  | 24% | 25h | 28.5d | 0.25d | start no earlier than 2018-04-09 08:00 | Flávio [70%]; André [7%] | 7.87h | 5.17h | 39.33 | 25.85 | mais tempo |
| 3 | 1.2 | **Relatório Requisitos** |  | 6.75d | 2018-04-09 08:00 A | 2018-04-23 15:30 |  | 84% | 1.08d | 35.75d | 7.5d |  |  | 14.9h | 11.85h | 74.5 | 59.25 |  |
| 4 | 1.2.1 | Investigação no terreno |  | 0.5h | 2018-04-09 13:30 A | 2018-04-09 14:00 A |  | 100% |  |  |  |  | Flávio | 0.5h | 0.5h | 2.5 | 2.5 |  |
| 5 | 1.2.2 | Introdução |  | 5h | 2018-04-09 08:00 A | 2018-04-16 14:30 | 4 | 90% | 0.5h | 40d |  |  | André [40%]; Flávio [60%] | 4h | 3.8h | 20 | 19 |  |
| 6 | 1.2.3 | Requisitos Funcionais |  | 9h | 2018-04-10 13:30 A | 2018-04-18 10:00 | 4 | 95% | 0.45h | 37d | 1.25d | start no earlier than 2018-04-10 08:00 | André [60%]; Flávio [40%] | 7.5h | 7.05h | 37.5 | 35.25 | mais rh e mais tempo |
| 7 | 1.2.4 | Requisitos Não Funcionais |  | 2h | 2018-04-18 08:00 A | 2018-04-18 11:30 A | 4 | 100% |  |  |  | start no earlier than 2018-04-18 08:00 | André [90%]; Flávio [10%] | 0.5h | 0.5h | 2.5 | 2.5 |  |
| 8 | 1.2.5 | Diagrama Casos de Uso |  | 2h | 2018-04-23 13:30 | 2018-04-23 15:30 | 6, 7 |  |  | 35.75d |  | start no earlier than 2018-04-23 08:00 | André; Flávio [10%]; Rodrigo [10%] | 2.4h |  | 12 |  |  |
| 9 | 1.3 | **Relatório Planeamento** |  | 2.75d | 2018-04-17 08:00 A | 2018-04-18 12:30 |  | 94% | 0.16d | 36.75d | 8.5d |  |  | 6h | 5.6h | 30 | 28 |  |
| 10 | 1.3.1 | Planificação Geral do Projeto |  | 2h | 2018-04-18 09:00 A | 2018-04-18 11:00 |  | 80% | 0.4h | 37.5d |  | start no earlier than 2018-04-18 08:00 | André [50%]; Flávio [50%] | 2h | 1.6h | 10 | 8 | mais rh |
| 11 | 1.3.2 | Plano de riscos |  | 3h | 2018-04-18 09:30 A | 2018-04-18 12:30 |  | 99% | 0h | 36.75d |  | start no earlier than 2018-04-18 08:00 | Flávio [50%]; André [50%]; Rodrigo [20%] | 2h | 2h | 10 | 10 | mais rh e mais tempo |
| 12 | 1.3.3 | Matriz de Responsabilidades |  | 2h | 2018-04-17 08:00 A | 2018-04-17 17:00 A |  | 100% |  |  |  | start no earlier than 2018-04-17 08:00 | Flávio [90%]; André [10%] | 2h | 2h | 10 | 10 |  |
| 13 | 1.4 | **Relatório Scrum** |  | 2.5d | 2018-05-08 13:30 | 2018-05-09 12:00 |  |  |  | 28.25d | 0d |  |  | 13h |  | 65 |  |  |
| 14 | 1.4.1 | Introdução |  | 0.5h | 2018-05-08 13:30 | 2018-05-08 14:00 |  |  |  | 30.5d |  | start no earlier than 2018-05-08 08:00 | André | 0.5h |  | 2.5 |  |  |
| 15 | 1.4.2 | stakeholders |  | 0.5h | 2018-05-08 13:30 | 2018-05-08 14:00 |  |  |  | 30.5d |  | start no earlier than 2018-05-08 08:00 | André | 0.5h |  | 2.5 |  |  |
| 16 | 1.4.3 | Product Backlog |  | 5h | 2018-05-08 13:30 | 2018-05-09 12:00 | 3, 9 |  |  | 28.25d |  | start no earlier than 2018-05-08 08:00 | Rodrigo; Carlota | 10h |  | 50 |  | mais rh |
| 17 | 1.4.4 | Sprints |  | 2h | 2018-05-08 13:30 | 2018-05-08 15:30 | 3, 9 |  |  | 29.75d |  | start no earlier than 2018-05-08 08:00 | Flávio | 2h |  | 10 |  |  |
| 18 | 1.5 | Conclusão do planeamento | milestone | 0d | 2018-05-09 12:00 | 2018-05-09 12:00 | 2, 3, 9, 13 |  |  | 28.25d |  |  |  |  |  |  |  |  |
| 19 | 2 | **Sprint 1** |  | 27.75d? | 2018-04-25 08:00 | 2018-06-13 12:00 |  |  |  | 10.5d |  |  |  | 28.7h |  | 143.5 |  |  |
| 20 | 2.1 | **Investigação javafx** |  | 5.25d? | 2018-04-25 08:00 | 2018-05-02 12:00 |  |  |  | 12.25d |  |  |  | 7.7h |  | 38.5 |  |  |
| 21 | 2.1.1 | criação tabelas |  | 6h | 2018-04-25 08:00 | 2018-05-01 14:00 |  |  |  | 16.25d | 0d | start no earlier than 2018-04-25 08:00 | André; Flávio; Rodrigo | 7.2h |  | 36 |  | mais rh e mais tempo |
| 22 | 2.1.2 | adicionar campos tabela |  | 0.5h | 2018-05-01 14:00 | 2018-05-01 14:30 | 21 |  |  | 17d | 0d |  | Flávio | 0.5h |  | 2.5 |  | mais rh e mais tempo |
| 23 | 2.1.3 | editar campos tabela |  | 1d? | 2018-05-01 14:30 | 2018-05-02 10:00 | 22 |  |  | 17d | 0d |  |  |  |  |  |  | mais rh e mais tempo |
| 24 | 2.1.4 | apagar campos tabela |  | 1d? | 2018-05-02 10:00 | 2018-05-02 12:00 | 23 |  |  | 17d | 0.75d |  |  |  |  |  |  | mais rh e mais tempo |

| ID | WBS | Task | Type | Duration | Start | Finish | Predecessors | Total slack | Free slack | Constraint | Resources | Work | Cost | Acção |
| --- | --- | --- | --- | --- | --- | --- | --- | --- | --- | --- | --- | --- | --- | --- |
| 25 | 2.2 | **Tabelas** |  | 13.75d? | 2018-05-01 14:00 | 2018-05-23 12:30 |  | 6.5d | 0d |  |  | 21h | 105 |  |
| 26 | 2.2.1 | criar tabela utilizadores comuns |  | 1h | 2018-05-01 14:00 | 2018-05-01 15:00 | 21 | 16.25d | 0d | start no earlier than 2018-04-30 08:00 | Flávio | 1h | 5 |  |
| 27 | 2.2.2 | criar tabela livros |  | 1.5h | 2018-05-14 13:30 | 2018-05-14 15:00 | 26 | 7.5d | 0d | start no earlier than 2018-05-14 08:00 | Flávio | 1.5h | 7.5 |  |
| 28 | 2.2.3 | criar tabela requisições |  | 0.5h | 2018-05-14 15:00 | 2018-05-14 15:30 | 27 | 7.5d | 0d |  | Flávio | 0.5h | 2.5 |  |
| 29 | 2.2.4 | Registar utilizadores comuns |  | 4h | 2018-05-15 13:30 | 2018-05-16 11:00 | 22, 28 | 7d | 0d |  | Carlota; André; Flávio | 12h | 60 |  |
| 30 | 2.2.5 | Registar livro |  | 3h | 2018-05-16 11:00 | 2018-05-21 15:00 | 27, 29 | 6.5d | 0d |  | André; Flávio | 6h | 30 |  |
| 31 | 2.2.6 | Registar requisição |  | 1d? | 2018-05-21 15:00 | 2018-05-22 15:00 | 29, 30 | 6.5d | 0d |  |  |  |  |  |
| 32 | 2.2.7 | editar linhas tabelas |  | 1d? | 2018-05-22 15:00 | 2018-05-23 10:30 | 23, 31 | 6.5d | 0d |  |  |  |  |  |
| 33 | 2.2.8 | apagar linhas tabelas |  | 1d? | 2018-05-23 10:30 | 2018-05-23 12:30 | 24, 32 | 6.5d |  |  |  |  |  |  |
| 34 | 2.3 | Janela de Informação |  | 2h | 2018-05-09 12:00 | 2018-05-14 15:00 | 1 | 28.25d |  |  |  |  |  |  |
| 35 | 2.4 | Registo de requisições |  | 2d | 2018-05-28 13:30 | 2018-05-29 15:30 | 25 | 6.5d | 0d |  |  |  |  | mais rh e mais tempo |
| 36 | 2.5 | Devolução de requisições |  | 2h? | 2018-05-30 09:00 | 2018-05-30 11:00 | 35 | 6.5d | 0d |  |  |  |  |  |
| 37 | 2.6 | Edição de requisições |  | 2h? | 2018-05-30 11:00 | 2018-06-04 14:00 | 36 | 6.5d | 0d |  |  |  |  |  |
| 38 | 2.7 | pesquisa de requisições por aluno |  | 2h? | 2018-06-04 14:00 | 2018-06-05 14:00 | 37 | 6.5d | 0d |  |  |  |  |  |
| 39 | 2.8 | pesquisa de requisições por livro |  | 2h? | 2018-06-05 14:00 | 2018-06-06 09:30 | 38 | 6.5d | 0d |  |  |  |  |  |
| 40 | 2.9 | Pesquisar qualquer tabela por qualquer campo |  | 10h | 2018-06-06 09:30 | 2018-06-13 12:00 | 39 | 6.5d | 0d |  |  |  |  |  |
| 41 | 3 | Reunião 22/5 | manual | 2h | 2018-05-22 08:00 | 2018-05-22 10:00 |  |  |  |  |  |  |  |  |
| 42 | 4 | Conclusão Sprint 1 | milestone | 0d | 2018-05-22 10:00 | 2018-05-22 10:00 | 41 | 12.25d | 0d |  |  |  |  |  |
| 43 | 5 | **Sprint 2** |  | 17.75d? | 2018-05-22 13:30 | 2018-06-20 12:30 |  | 6.5d |  |  |  | 34h | 170 |  |
| 44 | 5.1 | **save/load** |  | 6d | 2018-05-22 13:30 | 2018-05-30 11:30 |  | 12.25d | 0d |  |  | 12h | 60 |  |
| 45 | 5.1.1 | Save state .bin |  | 3h | 2018-05-22 13:30 | 2018-05-23 10:00 | 42 | 12.25d | 0d |  | André [50%]; Flávio [50%] | 3h | 15 |  |
| 46 | 5.1.2 | load state .bin |  | 3h | 2018-05-23 10:00 | 2018-05-28 14:00 | 45 | 12.25d | 0d |  | André [50%]; Flávio [50%] | 3h | 15 |  |
| 47 | 5.1.3 | importar tabelas .csv |  | 3h | 2018-05-28 14:00 | 2018-05-29 15:00 | 46 | 12.25d | 0d |  | André [50%]; Flávio [50%] | 3h | 15 |  |
| 48 | 5.1.4 | exportar tabelas .csv |  | 3h | 2018-05-29 15:00 | 2018-05-30 11:30 | 47 | 12.25d |  |  | André [50%]; Flávio [50%] | 3h | 15 |  |
| 49 | 5.2 | criar tabela funcionarios/admins |  | 1d? | 2018-05-22 13:30 | 2018-05-22 15:30 | 42 | 23.25d |  |  |  |  |  |  |
| 50 | 5.3 | bloquear falta de permissões |  | 12h | 2018-05-30 11:30 | 2018-06-12 15:00 | 53, 44 | 12.25d |  |  | André [50%]; Flávio [50%] | 12h | 60 | mais rh e mais tempo |
| 51 | 5.4 | Ocultar colunas nas pesquisas a pedido do utilizador |  | 8h | 2018-06-13 12:00 | 2018-06-20 12:30 | 40 | 6.5d |  | start no earlier than 2018-05-16 08:00 | André [50%]; Flávio [50%] | 8h | 40 |  |

| ID | WBS | Task | Type | Duration | Start | Finish | Predecessors | Total slack | Free slack | Constraint | Resources | Work | Cost | Acção |
| --- | --- | --- | --- | --- | --- | --- | --- | --- | --- | --- | --- | --- | --- | --- |
| 52 | 5.5 | **scene de login** |  | 1d | 2018-05-22 13:30 | 2018-05-22 15:30 |  | 17.25d |  |  |  | 2h | 10 |  |
| 53 | 5.5.1 | Login |  | 2h | 2018-05-22 13:30 | 2018-05-22 15:30 | 42 | 17.25d | 5d |  | André [50%]; Flávio [50%] | 2h | 10 | mais tempo |
| 54 | 5.6 | Reunião 12/6 | manual | 4d | 2018-06-12 08:00 | 2018-06-12 16:00 |  |  |  |  |  |  |  |  |
| 55 | 5.7 | Conclusão sprint 2 | milestone | 0d | 2018-06-12 16:00 | 2018-06-12 16:00 | 54 | 0d |  |  |  |  |  |  |
| 56 | 6 | Conclusão do projeto |  | 12d | 2018-06-13 09:00 | 2018-07-04 10:30 | 55 | 0d |  | finish no earlier than 2018-06-16 17:00 |  |  |  |  |
